# Warehouse Renovation Project

Schedule from MS Project, 2020-09-28 to 2021-03-19, costs in $.

## Calendars

- Standard: Mon-Fri 08:00-12:00, 13:00-17:00; Sat-Sun off.
- Vendor Shift: Mon-Fri 18:00-20:00, 20:30-23:45; Sat-Sun off.

## Resources

| Resource | Rate |
| --- | --- |
| Shraddha Sawant | 75 |
| Linda Mulherin | 48 |
| Nick Serafin | 45 |
| Ajit Singh | 52 |
| Victoria Dunn | 50 |
| Robert Adams | 57 |
| Laptops with s/w suite | 1850 |
| VoIP Handsets | 650 |
| Cubicle Furnitures | 2215 |
| Zerox LaserJet Multi-Functional High-speed Copier/Printer | 5750 |
| Cisco Aironet Wireless Access Points | 525 |
| Cisco 1002-X Aggregation Switch | 2350 |
| Cat 6E Network Cabling | 625 |

## Schedule

| ID | WBS | Task | Type | Duration | Start | Finish | Predecessors | Total slack | Constraint | Resources | Work | Cost |
| --- | --- | --- | --- | --- | --- | --- | --- | --- | --- | --- | --- | --- |
| 1 | 1 | **Initiate Project** |  | 7d | 2020-09-28 08:00 | 2020-10-06 17:00 |  | 0d |  |  | 25.5h | 1,586.9 |
| 2 | 1.1 | Develop Project Charter | manual | 30.75h | 2020-09-28 08:00 | 2020-09-30 23:45 |  |  | start no earlier than 2020-09-28 08:00 | Shraddha Sawant [25%] | 10h | 750 |
| 3 | 1.2 | **Project Kickoff Meeting** |  | 0.06d | 2020-10-01 08:00 | 2020-10-01 08:26 |  | 0d |  |  | 3.5h | 189.41 |
| 4 | 1.2.1 | Conference Room Meeting | manual | 0.45h | 2020-10-01 08:00 | 2020-10-01 08:26 |  |  | start no earlier than 2020-10-01 08:00 | Linda Mulherin; Nick Serafin; Robert Adams; Shraddha Sawant [75%]; Victoria Dunn; Ajit Singh | 2h | 109 |
| 5 | 1.2.2 | Tour Warehouse Facility | manual | 0.26h | 2020-10-01 08:00 | 2020-10-01 08:15 |  |  | start no earlier than 2020-10-01 08:00 | Linda Mulherin; Nick Serafin; Robert Adams; Shraddha Sawant [75%]; Victoria Dunn; Ajit Singh | 1.5h | 80.41 |
| 6 | 1.3 | Review and Approval of Project Charter | manual | 8h | 2020-10-02 08:00 | 2020-10-02 17:00 | 2 |  | finish no earlier than 2020-10-02 23:45 | Ajit Singh; Linda Mulherin; Nick Serafin; Robert Adams; Shraddha Sawant [75%]; Victoria Dunn | 2h | 107.22 |
| 7 | 1.4 | Develop Project Plan | manual | 12.97h | 2020-10-05 11:01 | 2020-10-06 17:00 | 6 |  | finish no earlier than 2020-10-06 23:45 | Linda Mulherin; Nick Serafin; Robert Adams; Shraddha Sawant [75%]; Victoria Dunn; Ajit Singh [25%] | 10h | 540.27 |
| 8 | 2 | **Plan Project** |  | 6d | 2020-10-07 08:00 | 2020-10-14 17:00 |  | 0d |  |  | 45h | 2,191.27 |
| 9 | 2.1 | **Gather and Document the requirements** |  | 4d | 2020-10-07 08:00 | 2020-10-12 17:00 |  | 0d |  |  | 22h | 1,091.27 |
| 10 | 2.1.1 | Determine and document the design for placement of furniture | manual | 22.75h | 2020-10-07 08:00 | 2020-10-08 23:45 | 7 |  | start no earlier than 2020-10-06 08:00 | Linda Mulherin [50%]; Ajit Singh | 10h | 515.27 |
| 11 | 2.1.2 | Determine and document all the hardware requirements and network connectivities | manual | 8h | 2020-10-09 08:00 | 2020-10-09 17:00 | 7 |  | start no earlier than 2020-10-09 08:00 | Linda Mulherin [75%] | 6h | 288 |
| 12 | 2.1.3 | Determine and document all the software requirements | manual | 8h | 2020-10-12 08:00 | 2020-10-12 17:00 | 7 |  | start no earlier than 2020-10-12 08:00 | Linda Mulherin [75%] | 6h | 288 |
| 13 | 2.2 | **Specify Material** |  | 2d | 2020-10-13 08:00 | 2020-10-14 17:00 |  | 0d |  |  | 23h | 1,100 |
| 14 | 2.2.1 | Communicate with the Procurement Department to determine preferred vendor and specify Cubicle Furniture | manual | 8h | 2020-10-13 08:00 | 2020-10-13 17:00 |  |  | start no earlier than 2020-10-13 08:00 | Nick Serafin [75%] | 6h | 270 |
| 15 | 2.2.2 | Communicate with the Procurement Department to determine preferred vendor and specify Laptop | manual | 8h | 2020-10-14 08:00 | 2020-10-14 17:00 |  |  | finish no earlier than 2020-10-14 23:45 | Nick Serafin; Victoria Dunn | 4h | 182 |
| 16 | 2.2.3 | Communicate with the Procurement Department to determine preferred vendor and specify VoIP Handsets | manual | 8h | 2020-10-14 08:00 | 2020-10-14 17:00 |  |  | finish no earlier than 2020-10-14 23:45 | Linda Mulherin | 4h | 192 |
| 17 | 2.2.4 | Communicate with the Procurement Department to determine preferred vendor for purchasing Zerox LaserJet multi-functional color network printer-copier | manual | 8h | 2020-10-13 08:00 | 2020-10-13 17:00 |  |  | start no earlier than 2020-10-13 08:00 | Ajit Singh [37.5%] | 3h | 156 |
| 18 | 2.2.5 | Coordinate with the Procurement Department to understand the vendor preference for the purchase of cat 6e cable and ME3400 aggregation switch | manual | 6.4h | 2020-10-14 09:36 | 2020-10-14 17:00 |  |  | finish no earlier than 2020-10-14 23:45 | Ajit Singh [46.9%] | 3h | 156 |
| 19 | 2.2.6 | Coordinate with the Procurement Department to determine the vendor preference for the purchase of Cisco Aironet wireless access points | manual | 8h | 2020-10-14 08:00 | 2020-10-14 17:00 |  |  | finish no earlier than 2020-10-14 23:45 | Linda Mulherin | 3h | 144 |
| 20 | 3 | **Procurement** |  | 3d | 2020-10-15 08:00 | 2020-10-19 23:45 |  | 0d |  |  | 27h | 1,299 |
| 21 | 3.1 | Build a order list and obtain cost quotation for each item on the list | manual | 22.75h | 2020-10-15 08:00 | 2020-10-16 23:45 | 13 |  | start no earlier than 2020-10-15 08:00 | Nick Serafin | 12h | 540 |
| 22 | 3.2 | **Place Order** |  | 1d | 2020-10-19 08:00 | 2020-10-19 23:45 |  | 0d |  |  | 15h | 759 |
| 23 | 3.2.1 | Order Cubicle Furniture | manual | 8h | 2020-10-19 08:00 | 2020-10-19 17:00 |  |  | start no earlier than 2020-10-19 08:00 | Victoria Dunn [37.5%] | 3h | 150 |
| 24 | 3.2.2 | Order Laptops | manual | 8h | 2020-10-19 08:00 | 2020-10-19 17:00 |  |  | start no earlier than 2020-10-19 08:00 | Victoria Dunn [37.5%] | 3h | 150 |
| 25 | 3.2.3 | Order VoIP Handsets | manual | 2h | 2020-10-19 08:00 | 2020-10-19 10:00 |  |  | start no earlier than 2020-10-19 08:00 | Robert Adams | 2h | 114 |
| 26 | 3.2.4 | Order Zerox LaserJet multi-functional color network printer-copier | manual | 8h | 2020-10-19 08:00 | 2020-10-19 17:00 |  |  | finish no earlier than 2020-10-19 23:45 | Linda Mulherin | 2h | 96 |
| 27 | 3.2.5 | Order cat 6e cable and ME3400 aggregation switch | manual | 8h | 2020-10-19 08:00 | 2020-10-19 17:00 |  |  | start no earlier than 2020-10-19 08:00 | Nick Serafin | 3h | 135 |
| 28 | 3.2.6 | Order Cisco Aironet wireless access points | manual | 14.75h | 2020-10-19 08:00 | 2020-10-19 23:45 |  |  | start no earlier than 2020-10-19 08:00 | Robert Adams | 2h | 114 |

| ID | WBS | Task | Type | Duration | Start | Finish | Predecessors | Total slack | Free slack | Constraint | Calendar | Resources | Work | Cost |
| --- | --- | --- | --- | --- | --- | --- | --- | --- | --- | --- | --- | --- | --- | --- |
| 29 | 4 | **Execute Project** |  | 14.25d | 2020-12-29 15:00 | 2021-01-18 17:00 |  | 0d |  |  |  |  | 149h | 65,653 |
| 30 | 4.1 | **Receive and Inspect** |  | 6.75d | 2020-12-29 15:00 | 2021-01-07 12:00 |  | 0d |  |  |  |  | 40h | 60,516 |
| 31 | 4.1.1 | R&I Cubicle Furniture | manual | 10h | 2020-12-29 15:00 | 2020-12-30 17:00 | 23FS+10w |  |  | finish no earlier than 2020-12-30 23:45 |  | Cubicle Furnitures [1000%]; Linda Mulherin | 10h | 22,630 |
| 32 | 4.1.2 | R&I Laptops | manual | 10h | 2021-01-04 08:00 | 2021-01-05 10:00 | 24FS+8w |  |  | start no earlier than 2021-01-04 08:00 |  | Laptops with s/w suite [1000%]; Victoria Dunn | 10h | 19,000 |
| 33 | 4.1.3 | R&I VoIP Handsets | manual | 8h | 2021-01-05 08:00 | 2021-01-05 17:00 | 25FS+8w |  |  | start no earlier than 2021-01-05 08:00 |  | VoIP Handsets [1000%]; Ajit Singh | 8h | 6,916 |
| 34 | 4.1.4 | R&I Zerox LaserJet multi-functional color network printer-copier | manual | 4h | 2021-01-06 08:00 | 2021-01-06 12:00 | 26FS+8w |  |  | start no earlier than 2021-01-06 08:00 |  | Zerox LaserJet Multi-Functional High-speed Copier/Printer; Robert Adams | 4h | 5,978 |
| 35 | 4.1.5 | R&I Cat 6e cable and ME3400 aggregation switch | manual | 4h | 2021-01-07 08:00 | 2021-01-07 12:00 | 27FS+8w |  |  | start no earlier than 2021-01-07 08:00 |  | Cisco 1002-X Aggregation Switch; Cat 6E Network Cabling; Linda Mulherin | 4h | 3,167 |
| 36 | 4.1.6 | R&I Cisco Aironet wireless access points | manual | 4h | 2021-01-07 08:00 | 2021-01-07 12:00 | 28FS+8w |  |  | start no earlier than 2021-01-07 08:00 |  | Cisco Aironet Wireless Access Points [500%]; Victoria Dunn | 4h | 2,825 |
| 37 | 4.2 | **Installation and Configuration** |  | 8d | 2020-12-30 18:00 | 2021-01-11 23:45 |  | 3d |  |  |  |  | 52h | 2,391 |
| 38 | 4.2.1 | **Install Cubicle Furniture** |  | 4d | 2020-12-30 18:00 | 2021-01-05 23:45 |  | 3d | 1d |  |  |  | 28h | 1,260 |
| 39 | 4.2.1.1 | Assemble the furniture |  | 20h | 2020-12-30 18:00 | 2021-01-04 22:45 | 31 | 19.16d |  |  | Vendor Shift | Nick Serafin | 20h | 900 |
| 40 | 4.2.1.2 | Place the assembled furniture in assigned office space | manual | 8h | 2021-01-04 21:00 | 2021-01-05 23:45 |  |  |  | finish no earlier than 2021-01-05 23:45 | Vendor Shift | Nick Serafin | 8h | 360 |
| 41 | 4.2.2 | **Install Laptops** |  | 3d | 2021-01-06 18:00 | 2021-01-11 23:45 |  | 1d |  |  |  |  | 24h | 1,131 |
| 42 | 4.2.2.1 | Install all the required hardware |  | 10h | 2021-01-06 18:00 | 2021-01-07 23:15 | 32, 38 | 18.38d | 0d |  | Vendor Shift | Nick Serafin | 10h | 450 |
| 43 | 4.2.2.2 | Establish a connectivity to the existing cloud storage solution for all laptops | manual | 5.75h | 2021-01-07 23:15 | 2021-01-08 23:45 | 42 |  |  | start no earlier than 2021-01-07 08:00 | Vendor Shift | Linda Mulherin | 5h | 240 |
| 44 | 4.2.2.3 | Load the laptops with the Windows 10 Enterprise operating system, Microsoft Office Professional 2019 Suite, Microsoft Security Essentials and Adobe Creative Cloud | manual | 4.5h | 2021-01-11 18:45 | 2021-01-11 23:45 | 42 |  |  | finish no earlier than 2021-01-11 23:45 | Vendor Shift | Linda Mulherin; Victoria Dunn | 9h | 441 |
| 45 | 4.3 | **Install VoIP Handsets** |  | 1d | 2021-01-06 18:00 | 2021-01-07 23:45 |  | 0d |  |  |  |  | 10h | 496 |
| 46 | 4.3.1 | Install all the required hardware | manual | 5.25h | 2021-01-06 18:00 | 2021-01-06 23:45 | 33, 38 |  |  | start no earlier than 2021-01-06 08:00 | Vendor Shift | Linda Mulherin | 6h | 288 |
| 47 | 4.3.2 | Extend the connectivity of the existing VoIP PBX (phone system) to the newly installed handsets | manual | 5.25h | 2021-01-07 18:00 | 2021-01-07 23:45 | 46 |  |  | finish no earlier than 2021-01-07 23:45 | Vendor Shift | Ajit Singh | 4h | 208 |
| 48 | 4.4 | Install and set-up a connection between the Zerox LaserJet printer-copier and the network in the old warehouse area | manual | 4h | 2021-01-07 18:00 | 2021-01-07 22:30 | 34, 38 |  |  | start no earlier than 2021-01-07 08:00 | Vendor Shift | Ajit Singh | 4h | 208 |
| 49 | 4.5 | **Install cat 6e cable and ME3400 aggregation switch** |  | 3d | 2021-01-08 08:00 | 2021-01-12 23:45 |  | 0d |  |  |  |  | 13h | 585 |
| 50 | 4.5.1 | Connect cat 6e cable from each of the 10 cubicles to a data closet in the old warehouse | manual | 5.25h | 2021-01-08 08:00 | 2021-01-08 13:15 | 35, 38 |  |  | start no earlier than 2021-01-08 08:00 | Vendor Shift | Nick Serafin | 5h | 225 |
| 51 | 4.5.2 | Install ME3400 aggregation switch and connect it to the data closet in old warehouse | manual | 5.25h | 2021-01-11 08:00 | 2021-01-11 13:15 | 38 |  |  | start no earlier than 2021-01-11 08:00 | Vendor Shift | Nick Serafin | 5h | 225 |
| 52 | 4.5.3 | Ensure a connection between ME3400 aggregation switch and Telco Corp.’s main router (Cisco 1002-X) in the main server room using existing multimode fiber | manual | 5.25h | 2021-01-12 18:00 | 2021-01-12 23:45 | 51 |  |  | finish no earlier than 2021-01-12 23:45 | Vendor Shift | Nick Serafin [57.1%] | 3h | 135 |

| ID | WBS | Task | Type | Duration | Start | Finish | Predecessors | Total slack | Free slack | Constraint | Calendar | Resources | Work | Cost |
| --- | --- | --- | --- | --- | --- | --- | --- | --- | --- | --- | --- | --- | --- | --- |
| 53 | 4.6 | **Install Cisco Aironet wireless access points** |  | 2d | 2021-01-11 23:00 | 2021-01-13 23:45 |  | 0d |  |  |  |  | 11h | 528 |
| 54 | 4.6.1 | Install and connect each access point to the Cisco ME3400 aggregation switch in the data closet using cat 6e cable | manual | 6h | 2021-01-11 23:00 | 2021-01-12 23:45 | 36, 38 |  |  | finish no earlier than 2021-01-12 23:45 | Vendor Shift | Linda Mulherin | 6h | 288 |
| 55 | 4.6.2 | Configure each access point to use WPA2 encryption for Wi-Fi access | manual | 5h | 2021-01-13 18:15 | 2021-01-13 23:45 | 54 |  |  | finish no earlier than 2021-01-13 23:45 | Vendor Shift | Linda Mulherin | 5h | 240 |
| 56 | 4.7 | **Testing** |  | 3d | 2021-01-14 08:00 | 2021-01-18 17:00 |  | 0d |  |  |  |  | 19h | 929 |
| 57 | 4.7.1 | Verify Cubicle Furniture Operations and Conditions along with its placement | manual | 8h | 2021-01-14 08:00 | 2021-01-14 17:00 | 38 |  |  | start no earlier than 2021-01-14 08:00 |  | Linda Mulherin | 3h | 144 |
| 58 | 4.7.2 | Test the compatibility and working of each laptop | manual | 8h | 2021-01-14 08:00 | 2021-01-14 17:00 | 41 |  |  | start no earlier than 2021-01-14 08:00 |  | Nick Serafin | 3h | 135 |
| 59 | 4.7.3 | Test the working of the entire VoIP handset set-up | manual | 8h | 2021-01-15 08:00 | 2021-01-15 17:00 | 45 |  |  | start no earlier than 2021-01-15 08:00 |  | Victoria Dunn | 3h | 150 |
| 60 | 4.7.4 | Test the working of printer-copier and its capability of shared printing from any PCs in the network | manual | 8h | 2021-01-15 08:00 | 2021-01-15 17:00 | 49 |  |  | start no earlier than 2021-01-15 08:00 |  | Victoria Dunn | 2h | 100 |
| 61 | 4.7.5 | Test the access to all company resources and working of Cisco ASA firewall protected WAN connection for Internet and external traffic through the Cat 6e cable and ME3400 aggregation switch setup | manual | 8h | 2021-01-15 08:00 | 2021-01-15 17:00 | 53 |  |  | start no earlier than 2021-01-15 08:00 |  | Victoria Dunn | 3h | 150 |
| 62 | 4.7.6 | Test the working of Cisco Aironet wireless access points framework | manual | 8h | 2021-01-18 08:00 | 2021-01-18 17:00 |  |  |  | start no earlier than 2021-01-18 08:00 |  | Victoria Dunn | 5h | 250 |
| 63 | 5 | **Close Project** |  | 44d | 2021-01-19 08:00 | 2021-03-19 17:00 |  | 0d |  |  |  |  | 53h | 3,237.85 |
| 64 | 5.1 | **Seek Sponsor Approval** |  | 40d | 2021-01-19 08:00 | 2021-03-15 17:00 |  | 0.83d | 0d |  |  |  | 36h | 2,160 |
| 65 | 5.1.1 | Sponsor Inspection |  | 8h | 2021-01-19 08:00 | 2021-01-19 17:00 | 56 | 23.83d | 23d |  |  | Shraddha Sawant [37.5%] | 3h | 225 |
| 66 | 5.1.2 | Fix Open Items | manual | 126.75h | 2021-02-22 08:00 | 2021-03-12 23:45 | 65 |  |  | start no earlier than 2021-02-22 08:00 |  | Robert Adams | 30h | 1,710 |
| 67 | 5.1.3 | Final Inspection |  | 8h | 2021-03-15 08:00 | 2021-03-15 17:00 | 66 | 0.83d |  |  |  | Shraddha Sawant [37.5%] | 3h | 225 |
| 68 | 5.2 | Final Documentation and Archiving | manual | 13.33h | 2021-03-16 08:00 | 2021-03-17 14:20 | 64 |  |  | start no earlier than 2021-03-16 08:00 |  | Shraddha Sawant [75%]; Linda Mulherin; Victoria Dunn | 8h | 402.85 |
| 69 | 5.3 | Release Project Team Members | manual | 12h | 2021-03-18 13:00 | 2021-03-19 17:00 | 68 |  |  | finish no earlier than 2021-03-19 23:45 |  | Shraddha Sawant [75%] | 9h | 675 |
